,taskrsrc_id,task_id,proj_id,cost_qty_link_flag,role_id,acct_id,rsrc_id,pobs_id,skill_level,pend_complete_pct,remain_qty,pend_remain_qty,target_qty,remain_qty_per_hr,pend_act_reg_qty,target_lag_drtn_hr_cnt,target_qty_per_hr,act_ot_qty,pend_act_ot_qty,act_reg_qty,relag_drtn_hr_cnt,ot_factor,cost_per_qty,target_cost,act_reg_cost,act_ot_cost,remain_cost,act_start_date,act_end_date,restart_date,reend_date,target_start_date,target_end_date,rem_late_start_date,rem_late_end_date,rollup_dates_flag,target_crv,remain_crv,actual_crv,ts_pend_act_end_flag,guid,rate_type,act_this_per_cost,act_this_per_qty,curv_id,rsrc_type,cost_per_qty_source_type,create_user,create_date,old_restart_date,old_reend_date,old_remain_drtn_hr_cnt,has_rsrchours,taskrsrc_sum_id
233,282877,110863,765,Y,,,2668,,,,32,,32,1,,0,1,0,,0,0,0,350,11200,0,0,11200,,,2011-01-15 08:00,2011-01-18 16:00,2011-01-15 08:00,2011-01-18 16:00,2011-01-19 08:00,2011-01-23 16:00,Y,,,,N,Ilt6QpGRE0u381RpY/wzAg,COST_PER_QTY,0,0,64,RT_Mat,ST_Rsrc,admin,2010-05-10 09:10
234,282878,110850,765,Y,,,2669,,,,87,,87,2.71875,,0,2.71875,0,,0,0,,300,26100,0,0,26100,,,2010-03-11 08:00,2010-03-15 16:00,2010-03-11 08:00,2010-03-15 16:00,2010-03-11 08:00,2010-03-15 16:00,Y,,,,N,cKFBqS+Bkki4IOv2SoK4hQ,COST_PER_QTY,0,0,64,RT_Mat,ST_Rsrc,admin,2010-05-10 09:10
235,282879,110840,765,Y,,,2669,,,,190,,190,3.39285714,,0,3.39285714,0,,0,0,,300,57000,0,0,57000,,,2010-03-02 08:00,2010-03-09 16:00,2010-03-02 08:00,2010-03-09 16:00,2010-03-02 08:00,2010-03-09 16:00,Y,,,,N,yuNyJstPuUSGU38lc1tmWQ,COST_PER_QTY,0,0,64,RT_Mat,ST_Rsrc,admin,2010-05-10 09:10
236,282880,110842,765,Y,,,2669,,,,16,,16,1,,0,1,0,,0,0,,300,4800,0,0,4800,,,2010-06-19 08:00,2010-06-20 16:00,2010-06-19 08:00,2010-06-20 16:00,2010-06-19 08:00,2010-06-20 16:00,Y,,,,N,gXDwtaZ870yAfer2M9kewQ,COST_PER_QTY,0,0,64,RT_Mat,ST_Rsrc,admin,2010-05-10 09:10
237,282881,110845,765,Y,,,2668,,,,104,,104,1,,0,1,0,,0,0,0,350,36400,0,0,36400,,,2010-05-19 08:00,2010-06-02 16:00,2010-05-19 08:00,2010-06-02 16:00,2010-05-19 08:00,2010-06-02 16:00,Y,,,,N,RgSXQ2dbY0mi9q277SMurQ,COST_PER_QTY,0,0,64,RT_Mat,ST_Rsrc,admin,2010-05-10 09:10
238,282882,110841,765,Y,,,2668,,,,88,,88,1,,0,1,0,,0,0,0,350,30800,0,0,30800,,,2010-03-16 08:00,2010-03-28 16:00,2010-03-16 08:00,2010-03-28 16:00,2010-03-16 08:00,2010-03-28 16:00,Y,,,,N,RXTgUc2iTEqKGBJg7FqVXQ,COST_PER_QTY,0,0,64,RT_Mat,ST_Rsrc,admin,2010-05-10 09:10
239,282883,110839,765,Y,,,2669,,,,16,,16,1,,0,1,0,,0,0,,300,4800,0,0,4800,,,2010-02-28 08:00,2010-03-01 16:00,2010-02-28 08:00,2010-03-01 16:00,2010-02-28 08:00,2010-03-01 16:00,Y,,,,N,aCJBnG1Qik6L8c2YAP0ABA,COST_PER_QTY,0,0,64,RT_Mat,ST_Rsrc,admin,2010-05-10 09:10
240,282884,110953,765,Y,,,2668,,,,16,,16,0.25,,0,0.25,0,,0,0,0,350,5600,0,0,5600,,,2010-06-21 08:00,2010-06-29 16:00,2010-06-21 08:00,2010-06-29 16:00,2010-06-21 08:00,2010-06-29 16:00,Y,,,,N,fxs2xnEuvESKjNo8qGtJdQ,COST_PER_QTY,0,0,64,RT_Mat,ST_Rsrc,admin,2010-05-10 09:10
241,282885,110959,765,Y,,,2668,,,,64,,64,1,,0,1,0,,0,0,0,350,22400,0,0,22400,,,2010-09-30 08:00,2010-10-09 16:00,2010-09-30 08:00,2010-10-09 16:00,2010-09-30 08:00,2010-10-09 16:00,Y,,,,N,dOvPKoEiq0aeNyenuKBwYQ,COST_PER_QTY,0,0,64,RT_Mat,ST_Rsrc,admin,2010-05-10 09:10
242,282886,110963,765,Y,,,2668,,,,64,,64,1,,0,1,0,,0,0,0,350,22400,0,0,22400,,,2010-12-07 08:00,2010-12-15 16:00,2010-12-07 08:00,2010-12-15 16:00,2010-12-07 08:00,2010-12-15 16:00,Y,,,,N,mUsCnJdZtU6YM8qSUUowrA,COST_PER_QTY,0,0,64,RT_Mat,ST_Rsrc,admin,2010-05-10 09:10
243,282887,110957,765,Y,,,2668,,,,64,,64,1,,0,1,0,,0,0,0,350,22400,0,0,22400,,,2010-08-28 08:00,2010-09-05 16:00,2010-08-28 08:00,2010-09-05 16:00,2010-08-28 08:00,2010-09-05 16:00,Y,,,,N,1P7TMo2eE0ak8NFYKEaLSA,COST_PER_QTY,0,0,64,RT_Mat,ST_Rsrc,admin,2010-05-10 09:10
244,282888,110961,765,Y,,,2668,,,,64,,64,1,,0,1,0,,0,0,0,350,22400,0,0,22400,,,2010-11-03 08:00,2010-11-11 16:00,2010-11-03 08:00,2010-11-11 16:00,2010-11-03 08:00,2010-11-11 16:00,Y,,,,N,Lyr637FhpEm3PPakt+ZqEQ,COST_PER_QTY,0,0,64,RT_Mat,ST_Rsrc,admin,2010-05-10 09:10
245,282889,110955,765,Y,,,2668,,,,64,,64,1,,0,1,0,,0,0,0,350,22400,0,0,22400,,,2010-07-25 08:00,2010-08-02 16:00,2010-07-25 08:00,2010-08-02 16:00,2010-07-25 08:00,2010-08-02 16:00,Y,,,,N,Zn1vJOCI4kiGAVMg2fUB7Q,COST_PER_QTY,0,0,64,RT_Mat,ST_Rsrc,admin,2010-05-10 09:10
246,282890,110964,765,Y,,,2668,,,,32,,32,1,,0,1,0,,0,0,0,350,11200,0,0,11200,,,2011-01-10 08:00,2011-01-13 16:00,2011-01-10 08:00,2011-01-13 16:00,2011-01-15 08:00,2011-01-18 16:00,Y,,,,N,4sdi+3oBm0+r0k6HI7ItMA,COST_PER_QTY,0,0,64,RT_Mat,ST_Rsrc,admin,2010-05-10 09:10
247,282891,110954,765,Y,,,2668,,,,168,,168,1,,0,1,0,,0,0,0,350,58800,0,0,58800,,,2010-06-30 08:00,2010-07-24 16:00,2010-06-30 08:00,2010-07-24 16:00,2010-06-30 08:00,2010-07-24 16:00,Y,,,,N,yYzwlC+CiUKdzYmnIveXKA,COST_PER_QTY,0,0,64,RT_Mat,ST_Rsrc,admin,2010-05-10 09:10
248,282892,110956,765,Y,,,2668,,,,168,,168,1,,0,1,0,,0,0,0,350,58800,0,0,58800,,,2010-08-03 08:00,2010-08-26 16:00,2010-08-03 08:00,2010-08-26 16:00,2010-08-03 08:00,2010-08-26 16:00,Y,,,,N,D+McGPdsREGDIIs6jhJnAA,COST_PER_QTY,0,0,64,RT_Mat,ST_Rsrc,admin,2010-05-10 09:10
249,282893,110960,765,Y,,,2668,,,,168,,168,1,,0,1,0,,0,0,0,350,58800,0,0,58800,,,2010-10-10 08:00,2010-11-02 16:00,2010-10-10 08:00,2010-11-02 16:00,2010-10-10 08:00,2010-11-02 16:00,Y,,,,N,EFcbBDzOoEaUX6azkM+sWA,COST_PER_QTY,0,0,64,RT_Mat,ST_Rsrc,admin,2010-05-10 09:10
250,282894,110958,765,Y,,,2668,,,,168,,168,1,,0,1,0,,0,0,0,350,58800,0,0,58800,,,2010-09-06 08:00,2010-09-29 16:00,2010-09-06 08:00,2010-09-29 16:00,2010-09-06 08:00,2010-09-29 16:00,Y,,,,N,xOOHy9CXX0OtzHm0D104Eg,COST_PER_QTY,0,0,64,RT_Mat,ST_Rsrc,admin,2010-05-10 09:10
251,282895,110979,765,Y,,,2668,,,,168,,168,1,,0,1,0,,0,0,0,350,58800,0,0,58800,,,2010-12-16 08:00,2011-01-09 16:00,2010-12-16 08:00,2011-01-09 16:00,2010-12-16 08:00,2011-01-09 16:00,Y,,,,N,6e8T58c1lkyi6G9YP8ui0g,COST_PER_QTY,0,0,64,RT_Mat,ST_Rsrc,admin,2010-05-10 09:10
252,282896,110962,765,Y,,,2668,,,,168,,168,1,,0,1,0,,0,0,0,350,58800,0,0,58800,,,2010-11-13 08:00,2010-12-06 16:00,2010-11-13 08:00,2010-12-06 16:00,2010-11-13 08:00,2010-12-06 16:00,Y,,,,N,iFKZunJOb06aBn7iCZdtDg,COST_PER_QTY,0,0,64,RT_Mat,ST_Rsrc,admin,2010-05-10 09:10
253,282897,110965,765,Y,,,2668,,,,32,,32,1,,0,1,0,,0,0,0,350,11200,0,0,11200,,,2011-01-15 08:00,2011-01-18 16:00,2011-01-15 08:00,2011-01-18 16:00,2011-01-19 08:00,2011-01-23 16:00,Y,,,,N,clzY8yteZEODp1lSpsjttQ,COST_PER_QTY,0,0,64,RT_Mat,ST_Rsrc,admin,2010-05-10 09:10
254,282898,110952,765,Y,,,2669,,,,87,,87,2.71875,,0,2.71875,0,,0,0,,300,26100,0,0,26100,,,2010-03-11 08:00,2010-03-15 16:00,2010-03-11 08:00,2010-03-15 16:00,2010-03-11 08:00,2010-03-15 16:00,Y,,,,N,4j728i00hkmAtbjbMezp6w,COST_PER_QTY,0,0,64,RT_Mat,ST_Rsrc,admin,2010-05-10 09:10
255,282899,110942,765,Y,,,2669,,,,190,,190,3.39285714,,0,3.39285714,0,,0,0,,300,57000,0,0,57000,,,2010-03-02 08:00,2010-03-09 16:00,2010-03-02 08:00,2010-03-09 16:00,2010-03-02 08:00,2010-03-09 16:00,Y,,,,N,DQ6BKiojy0W+CmGTXWwu9w,COST_PER_QTY,0,0,64,RT_Mat,ST_Rsrc,admin,2010-05-10 09:10
256,282900,110944,765,Y,,,2669,,,,16,,16,1,,0,1,0,,0,0,,300,4800,0,0,4800,,,2010-06-19 08:00,2010-06-20 16:00,2010-06-19 08:00,2010-06-20 16:00,2010-06-19 08:00,2010-06-20 16:00,Y,,,,N,XEU3JURoBE+54F5tSCLtEQ,COST_PER_QTY,0,0,64,RT_Mat,ST_Rsrc,admin,2010-05-10 09:10
257,282901,110947,765,Y,,,2668,,,,104,,104,1,,0,1,0,,0,0,0,350,36400,0,0,36400,,,2010-05-19 08:00,2010-06-02 16:00,2010-05-19 08:00,2010-06-02 16:00,2010-05-19 08:00,2010-06-02 16:00,Y,,,,N,eW6ZZSYmkEeX5o2jdKcQMg,COST_PER_QTY,0,0,64,RT_Mat,ST_Rsrc,admin,2010-05-10 09:10
258,282902,110943,765,Y,,,2668,,,,88,,88,1,,0,1,0,,0,0,0,350,30800,0,0,30800,,,2010-03-16 08:00,2010-03-28 16:00,2010-03-16 08:00,2010-03-28 16:00,2010-03-16 08:00,2010-03-28 16:00,Y,,,,N,c23BkFv5aU2AgCpCD7hwlg,COST_PER_QTY,0,0,64,RT_Mat,ST_Rsrc,admin,2010-05-10 09:10
259,282903,110941,765,Y,,,2669,,,,16,,16,1,,0,1,0,,0,0,,300,4800,0,0,4800,,,2010-02-28 08:00,2010-03-01 16:00,2010-02-28 08:00,2010-03-01 16:00,2010-02-28 08:00,2010-03-01 16:00,Y,,,,N,EhlJeSOHm0miDSbIJaVG8g,COST_PER_QTY,0,0,64,RT_Mat,ST_Rsrc,admin,2010-05-10 09:10
260,282904,111055,765,Y,,,2668,,,,16,,16,0.25,,0,0.25,0,,0,0,0,350,5600,0,0,5600,,,2010-06-21 08:00,2010-06-29 16:00,2010-06-21 08:00,2010-06-29 16:00,2010-06-21 08:00,2010-06-29 16:00,Y,,,,N,SpwkUv4e50mGSHqrOx4RFQ,COST_PER_QTY,0,0,64,RT_Mat,ST_Rsrc,admin,2010-05-10 09:10
261,282905,111061,765,Y,,,2668,,,,64,,64,1,,0,1,0,,0,0,0,350,22400,0,0,22400,,,2010-09-30 08:00,2010-10-09 16:00,2010-09-30 08:00,2010-10-09 16:00,2010-09-30 08:00,2010-10-09 16:00,Y,,,,N,pPFqj/8/f0unBvMWz9Gc7Q,COST_PER_QTY,0,0,64,RT_Mat,ST_Rsrc,admin,2010-05-10 09:10
262,282906,111065,765,Y,,,2668,,,,64,,64,1,,0,1,0,,0,0,0,350,22400,0,0,22400,,,2010-12-07 08:00,2010-12-15 16:00,2010-12-07 08:00,2010-12-15 16:00,2010-12-07 08:00,2010-12-15 16:00,Y,,,,N,ECD5YonwaUW+QqVNL7m5Vw,COST_PER_QTY,0,0,64,RT_Mat,ST_Rsrc,admin,2010-05-10 09:10
263,282907,111059,765,Y,,,2668,,,,64,,64,1,,0,1,0,,0,0,0,350,22400,0,0,22400,,,2010-08-28 08:00,2010-09-05 16:00,2010-08-28 08:00,2010-09-05 16:00,2010-08-28 08:00,2010-09-05 16:00,Y,,,,N,t1Tf9vQO+0qlmkyOrislfg,COST_PER_QTY,0,0,64,RT_Mat,ST_Rsrc,admin,2010-05-10 09:10
264,282908,111063,765,Y,,,2668,,,,64,,64,1,,0,1,0,,0,0,0,350,22400,0,0,22400,,,2010-11-03 08:00,2010-11-11 16:00,2010-11-03 08:00,2010-11-11 16:00,2010-11-03 08:00,2010-11-11 16:00,Y,,,,N,CRX1DUQ9pUuzTvAZfHQRow,COST_PER_QTY,0,0,64,RT_Mat,ST_Rsrc,admin,2010-05-10 09:10
265,282909,111057,765,Y,,,2668,,,,64,,64,1,,0,1,0,,0,0,0,350,22400,0,0,22400,,,2010-07-25 08:00,2010-08-02 16:00,2010-07-25 08:00,2010-08-02 16:00,2010-07-25 08:00,2010-08-02 16:00,Y,,,,N,MuFLb1Anw0mZtuovZ7lWKA,COST_PER_QTY,0,0,64,RT_Mat,ST_Rsrc,admin,2010-05-10 09:10
266,282910,111066,765,Y,,,2668,,,,32,,32,1,,0,1,0,,0,0,0,350,11200,0,0,11200,,,2011-01-10 08:00,2011-01-13 16:00,2011-01-10 08:00,2011-01-13 16:00,2011-01-15 08:00,2011-01-18 16:00,Y,,,,N,xoJfpb0NEkWWumZi7L9tLA,COST_PER_QTY,0,0,64,RT_Mat,ST_Rsrc,admin,2010-05-10 09:10
267,282911,111056,765,Y,,,2668,,,,168,,168,1,,0,1,0,,0,0,0,350,58800,0,0,58800,,,2010-06-30 08:00,2010-07-24 16:00,2010-06-30 08:00,2010-07-24 16:00,2010-06-30 08:00,2010-07-24 16:00,Y,,,,N,hd5qd6S6fk68MeDseFxKAw,COST_PER_QTY,0,0,64,RT_Mat,ST_Rsrc,admin,2010-05-10 09:10
268,282912,111058,765,Y,,,2668,,,,168,,168,1,,0,1,0,,0,0,0,350,58800,0,0,58800,,,2010-08-03 08:00,2010-08-26 16:00,2010-08-03 08:00,2010-08-26 16:00,2010-08-03 08:00,2010-08-26 16:00,Y,,,,N,X25KPZEMoEmBCeOHdb5I5A,COST_PER_QTY,0,0,64,RT_Mat,ST_Rsrc,admin,2010-05-10 09:10
269,282913,111062,765,Y,,,2668,,,,168,,168,1,,0,1,0,,0,0,0,350,58800,0,0,58800,,,2010-10-10 08:00,2010-11-02 16:00,2010-10-10 08:00,2010-11-02 16:00,2010-10-10 08:00,2010-11-02 16:00,Y,,,,N,6slCA57kqkyPD6HYzBu6wQ,COST_PER_QTY,0,0,64,RT_Mat,ST_Rsrc,admin,2010-05-10 09:10
270,282914,111060,765,Y,,,2668,,,,168,,168,1,,0,1,0,,0,0,0,350,58800,0,0,58800,,,2010-09-06 08:00,2010-09-29 16:00,2010-09-06 08:00,2010-09-29 16:00,2010-09-06 08:00,2010-09-29 16:00,Y,,,,N,5tybp3uVoEyZFvWLehEglQ,COST_PER_QTY,0,0,64,RT_Mat,ST_Rsrc,admin,2010-05-10 09:10
271,282915,111081,765,Y,,,2668,,,,168,,168,1,,0,1,0,,0,0,0,350,58800,0,0,58800,,,2010-12-16 08:00,2011-01-09 16:00,2010-12-16 08:00,2011-01-09 16:00,2010-12-16 08:00,2011-01-09 16:00,Y,,,,N,Fdww2uhzOkeTNwFPGkeSpw,COST_PER_QTY,0,0,64,RT_Mat,ST_Rsrc,admin,2010-05-10 09:10
272,282916,111064,765,Y,,,2668,,,,168,,168,1,,0,1,0,,0,0,0,350,58800,0,0,58800,,,2010-11-13 08:00,2010-12-06 16:00,2010-11-13 08:00,2010-12-06 16:00,2010-11-13 08:00,2010-12-06 16:00,Y,,,,N,4MPsma/W7USdunz5r0UyFA,COST_PER_QTY,0,0,64,RT_Mat,ST_Rsrc,admin,2010-05-10 09:10
273,282917,111067,765,Y,,,2668,,,,32,,32,1,,0,1,0,,0,0,0,350,11200,0,0,11200,,,2011-01-15 08:00,2011-01-18 16:00,2011-01-15 08:00,2011-01-18 16:00,2011-01-19 08:00,2011-01-23 16:00,Y,,,,N,hmJK3vev0EusWe3K9Ak6Jg,COST_PER_QTY,0,0,64,RT_Mat,ST_Rsrc,admin,2010-05-10 09:10
274,282918,111054,765,Y,,,2669,,,,87,,87,2.71875,,0,2.71875,0,,0,0,,300,26100,0,0,26100,,,2010-03-11 08:00,2010-03-15 16:00,2010-03-11 08:00,2010-03-15 16:00,2010-03-11 08:00,2010-03-15 16:00,Y,,,,N,h/CW9UT6xEmBROKpovpTkQ,COST_PER_QTY,0,0,64,RT_Mat,ST_Rsrc,admin,2010-05-10 09:10
275,282919,111044,765,Y,,,2669,,,,190,,190,3.39285714,,0,3.39285714,0,,0,0,,300,57000,0,0,57000,,,2010-03-02 08:00,2010-03-09 16:00,2010-03-02 08:00,2010-03-09 16:00,2010-03-02 08:00,2010-03-09 16:00,Y,,,,N,ABV29q+g5Ee0vJfZsTaFLQ,COST_PER_QTY,0,0,64,RT_Mat,ST_Rsrc,admin,2010-05-10 09:10
276,282920,111046,765,Y,,,2669,,,,16,,16,1,,0,1,0,,0,0,,300,4800,0,0,4800,,,2010-06-19 08:00,2010-06-20 16:00,2010-06-19 08:00,2010-06-20 16:00,2010-06-19 08:00,2010-06-20 16:00,Y,,,,N,m0Gg0DeGlEG9GRjdA+w83w,COST_PER_QTY,0,0,64,RT_Mat,ST_Rsrc,admin,2010-05-10 09:10
277,282921,111049,765,Y,,,2668,,,,104,,104,1,,0,1,0,,0,0,0,350,36400,0,0,36400,,,2010-05-19 08:00,2010-06-02 16:00,2010-05-19 08:00,2010-06-02 16:00,2010-05-19 08:00,2010-06-02 16:00,Y,,,,N,dCk4JtTUAE+jwuKN6hg/9g,COST_PER_QTY,0,0,64,RT_Mat,ST_Rsrc,admin,2010-05-10 09:10
278,282922,111045,765,Y,,,2668,,,,88,,88,1,,0,1,0,,0,0,0,350,30800,0,0,30800,,,2010-03-16 08:00,2010-03-28 16:00,2010-03-16 08:00,2010-03-28 16:00,2010-03-16 08:00,2010-03-28 16:00,Y,,,,N,dAX1GljUREOm4hNyeK6vkQ,COST_PER_QTY,0,0,64,RT_Mat,ST_Rsrc,admin,2010-05-10 09:10
279,282923,111043,765,Y,,,2669,,,,16,,16,1,,0,1,0,,0,0,,300,4800,0,0,4800,,,2010-02-28 08:00,2010-03-01 16:00,2010-02-28 08:00,2010-03-01 16:00,2010-02-28 08:00,2010-03-01 16:00,Y,,,,N,Lf+QrJ+cskCQJHrd51kIVA,COST_PER_QTY,0,0,64,RT_Mat,ST_Rsrc,admin,2010-05-10 09:10
280,282924,111157,765,Y,,,2668,,,,16,,16,0.25,,0,0.25,0,,0,0,0,350,5600,0,0,5600,,,2010-06-21 08:00,2010-06-29 16:00,2010-06-21 08:00,2010-06-29 16:00,2010-06-21 08:00,2010-06-29 16:00,Y,,,,N,A+QU3WQxqUyZJy9QD+mWQg,COST_PER_QTY,0,0,64,RT_Mat,ST_Rsrc,admin,2010-05-10 09:10
281,282925,111163,765,Y,,,2668,,,,64,,64,1,,0,1,0,,0,0,0,350,22400,0,0,22400,,,2010-09-30 08:00,2010-10-09 16:00,2010-09-30 08:00,2010-10-09 16:00,2010-09-30 08:00,2010-10-09 16:00,Y,,,,N,7eftl0fPxUidIUSSjKcXeg,COST_PER_QTY,0,0,64,RT_Mat,ST_Rsrc,admin,2010-05-10 09:10
282,282926,111167,765,Y,,,2668,,,,64,,64,1,,0,1,0,,0,0,0,350,22400,0,0,22400,,,2010-12-07 08:00,2010-12-15 16:00,2010-12-07 08:00,2010-12-15 16:00,2010-12-07 08:00,2010-12-15 16:00,Y,,,,N,Er3z0Yj/10eoL/SL1Hytew,COST_PER_QTY,0,0,64,RT_Mat,ST_Rsrc,admin,2010-05-10 09:10
283,282927,111161,765,Y,,,2668,,,,64,,64,1,,0,1,0,,0,0,0,350,22400,0,0,22400,,,2010-08-28 08:00,2010-09-05 16:00,2010-08-28 08:00,2010-09-05 16:00,2010-08-28 08:00,2010-09-05 16:00,Y,,,,N,h3ApgV5OEUK3zQPuUJF4pQ,COST_PER_QTY,0,0,64,RT_Mat,ST_Rsrc,admin,2010-05-10 09:10
284,282928,111165,765,Y,,,2668,,,,64,,64,1,,0,1,0,,0,0,0,350,22400,0,0,22400,,,2010-11-03 08:00,2010-11-11 16:00,2010-11-03 08:00,2010-11-11 16:00,2010-11-03 08:00,2010-11-11 16:00,Y,,,,N,OYi5t3yx/E2oM8m84yor/w,COST_PER_QTY,0,0,64,RT_Mat,ST_Rsrc,admin,2010-05-10 09:10
285,282929,111159,765,Y,,,2668,,,,64,,64,1,,0,1,0,,0,0,0,350,22400,0,0,22400,,,2010-07-25 08:00,2010-08-02 16:00,2010-07-25 08:00,2010-08-02 16:00,2010-07-25 08:00,2010-08-02 16:00,Y,,,,N,NUsszL5/TU+BFeqqhEVK9g,COST_PER_QTY,0,0,64,RT_Mat,ST_Rsrc,admin,2010-05-10 09:10
286,282930,111168,765,Y,,,2668,,,,32,,32,1,,0,1,0,,0,0,0,350,11200,0,0,11200,,,2011-01-10 08:00,2011-01-13 16:00,2011-01-10 08:00,2011-01-13 16:00,2011-01-15 08:00,2011-01-18 16:00,Y,,,,N,aov1mzerl0GGjhzv3Bqqxg,COST_PER_QTY,0,0,64,RT_Mat,ST_Rsrc,admin,2010-05-10 09:10
287,282931,111158,765,Y,,,2668,,,,168,,168,1,,0,1,0,,0,0,0,350,58800,0,0,58800,,,2010-06-30 08:00,2010-07-24 16:00,2010-06-30 08:00,2010-07-24 16:00,2010-06-30 08:00,2010-07-24 16:00,Y,,,,N,wo6GMn+8EEOaTa7ZcQn3SQ,COST_PER_QTY,0,0,64,RT_Mat,ST_Rsrc,admin,2010-05-10 09:10
288,282932,111160,765,Y,,,2668,,,,168,,168,1,,0,1,0,,0,0,0,350,58800,0,0,58800,,,2010-08-03 08:00,2010-08-26 16:00,2010-08-03 08:00,2010-08-26 16:00,2010-08-03 08:00,2010-08-26 16:00,Y,,,,N,wAmgXIKX6kmMupb0K3fDuQ,COST_PER_QTY,0,0,64,RT_Mat,ST_Rsrc,admin,2010-05-10 09:10
289,282933,111164,765,Y,,,2668,,,,168,,168,1,,0,1,0,,0,0,0,350,58800,0,0,58800,,,2010-10-10 08:00,2010-11-02 16:00,2010-10-10 08:00,2010-11-02 16:00,2010-10-10 08:00,2010-11-02 16:00,Y,,,,N,Ms6WpmaKhU+pj7I0DCkD3Q,COST_PER_QTY,0,0,64,RT_Mat,ST_Rsrc,admin,2010-05-10 09:10
290,282934,111162,765,Y,,,2668,,,,168,,168,1,,0,1,0,,0,0,0,350,58800,0,0,58800,,,2010-09-06 08:00,2010-09-29 16:00,2010-09-06 08:00,2010-09-29 16:00,2010-09-06 08:00,2010-09-29 16:00,Y,,,,N,MzpYKUHY9kqOp5ckTxR5oA,COST_PER_QTY,0,0,64,RT_Mat,ST_Rsrc,admin,2010-05-10 09:10
291,282935,111183,765,Y,,,2668,,,,168,,168,1,,0,1,0,,0,0,0,350,58800,0,0,58800,,,2010-12-16 08:00,2011-01-09 16:00,2010-12-16 08:00,2011-01-09 16:00,2010-12-16 08:00,2011-01-09 16:00,Y,,,,N,u3mixd0ST0e8g0LHGdN7og,COST_PER_QTY,0,0,64,RT_Mat,ST_Rsrc,admin,2010-05-10 09:10
292,282936,111166,765,Y,,,2668,,,,168,,168,1,,0,1,0,,0,0,0,350,58800,0,0,58800,,,2010-11-13 08:00,2010-12-06 16:00,2010-11-13 08:00,2010-12-06 16:00,2010-11-13 08:00,2010-12-06 16:00,Y,,,,N,m92DStJKfk6XHtadYp9PGA,COST_PER_QTY,0,0,64,RT_Mat,ST_Rsrc,admin,2010-05-10 09:10
293,282937,111169,765,Y,,,2668,,,,32,,32,1,,0,1,0,,0,0,0,350,11200,0,0,11200,,,2011-01-15 08:00,2011-01-18 16:00,2011-01-15 08:00,2011-01-18 16:00,2011-01-19 08:00,2011-01-23 16:00,Y,,,,N,TJSHUt1JQEySHxPPm/W/Rw,COST_PER_QTY,0,0,64,RT_Mat,ST_Rsrc,admin,2010-05-10 09:10
294,282938,111156,765,Y,,,2669,,,,87,,87,2.71875,,0,2.71875,0,,0,0,,300,26100,0,0,26100,,,2010-03-11 08:00,2010-03-15 16:00,2010-03-11 08:00,2010-03-15 16:00,2010-03-11 08:00,2010-03-15 16:00,Y,,,,N,L0ZI2Akeqk2a25EoWySTxw,COST_PER_QTY,0,0,64,RT_Mat,ST_Rsrc,admin,2010-05-10 09:10
295,282939,111146,765,Y,,,2669,,,,190,,190,3.39285714,,0,3.39285714,0,,0,0,,300,57000,0,0,57000,,,2010-03-02 08:00,2010-03-09 16:00,2010-03-02 08:00,2010-03-09 16:00,2010-03-02 08:00,2010-03-09 16:00,Y,,,,N,u0UQS8hjWki3zVyrSZQ5Ow,COST_PER_QTY,0,0,64,RT_Mat,ST_Rsrc,admin,2010-05-10 09:10
296,282940,111148,765,Y,,,2669,,,,16,,16,1,,0,1,0,,0,0,,300,4800,0,0,4800,,,2010-06-19 08:00,2010-06-20 16:00,2010-06-19 08:00,2010-06-20 16:00,2010-06-19 08:00,2010-06-20 16:00,Y,,,,N,R14EJoZBgEqF7TI3u25ejw,COST_PER_QTY,0,0,64,RT_Mat,ST_Rsrc,admin,2010-05-10 09:10
297,282941,111151,765,Y,,,2668,,,,104,,104,1,,0,1,0,,0,0,0,350,36400,0,0,36400,,,2010-05-19 08:00,2010-06-02 16:00,2010-05-19 08:00,2010-06-02 16:00,2010-05-19 08:00,2010-06-02 16:00,Y,,,,N,CjKDwzSKhk6orhsx13k1mg,COST_PER_QTY,0,0,64,RT_Mat,ST_Rsrc,admin,2010-05-10 09:10
298,282942,111147,765,Y,,,2668,,,,88,,88,1,,0,1,0,,0,0,0,350,30800,0,0,30800,,,2010-03-16 08:00,2010-03-28 16:00,2010-03-16 08:00,2010-03-28 16:00,2010-03-16 08:00,2010-03-28 16:00,Y,,,,N,S72hTPFCh0GjC8ngyQIJyA,COST_PER_QTY,0,0,64,RT_Mat,ST_Rsrc,admin,2010-05-10 09:10
