,taskrsrc_id,task_id,proj_id,cost_qty_link_flag,role_id,acct_id,rsrc_id,pobs_id,skill_level,pend_complete_pct,remain_qty,pend_remain_qty,target_qty,remain_qty_per_hr,pend_act_reg_qty,target_lag_drtn_hr_cnt,target_qty_per_hr,act_ot_qty,pend_act_ot_qty,act_reg_qty,relag_drtn_hr_cnt,ot_factor,cost_per_qty,target_cost,act_reg_cost,act_ot_cost,remain_cost,act_start_date,act_end_date,restart_date,reend_date,target_start_date,target_end_date,rem_late_start_date,rem_late_end_date,rollup_dates_flag,target_crv,remain_crv,actual_crv,ts_pend_act_end_flag,guid,rate_type,act_this_per_cost,act_this_per_qty,curv_id,rsrc_type,cost_per_qty_source_type,create_user,create_date,old_restart_date,old_reend_date,old_remain_drtn_hr_cnt,has_rsrchours,taskrsrc_sum_id
0,282644,109729,765,Y,,,2668,,,,16,,16,0.25,,0,0.25,0,,0,0,0,350,5600,0,0,5600,,,2010-06-21 08:00,2010-06-29 16:00,2010-06-21 08:00,2010-06-29 16:00,2010-06-21 08:00,2010-06-29 16:00,Y,,,,N,2Kuvmf+MeECBN4hFCyPlOg,COST_PER_QTY,0,0,64,RT_Mat,ST_Rsrc,admin,2010-05-10 09:10
1,282645,109735,765,Y,,,2668,,,,64,,64,1,,0,1,0,,0,0,0,350,22400,0,0,22400,,,2010-09-30 08:00,2010-10-09 16:00,2010-09-30 08:00,2010-10-09 16:00,2010-09-30 08:00,2010-10-09 16:00,Y,,,,N,wF6wJZL5N0CKXVbO7+9LzQ,COST_PER_QTY,0,0,64,RT_Mat,ST_Rsrc,admin,2010-05-10 09:10
2,282646,109739,765,Y,,,2668,,,,64,,64,1,,0,1,0,,0,0,0,350,22400,0,0,22400,,,2010-12-07 08:00,2010-12-15 16:00,2010-12-07 08:00,2010-12-15 16:00,2010-12-07 08:00,2010-12-15 16:00,Y,,,,N,RjJA5nubFEmw0jfwN5QMEQ,COST_PER_QTY,0,0,64,RT_Mat,ST_Rsrc,admin,2010-05-10 09:10
3,282647,109733,765,Y,,,2668,,,,64,,64,1,,0,1,0,,0,0,0,350,22400,0,0,22400,,,2010-08-28 08:00,2010-09-05 16:00,2010-08-28 08:00,2010-09-05 16:00,2010-08-28 08:00,2010-09-05 16:00,Y,,,,N,nuT6a0rBN0GoB3LpO50uEw,COST_PER_QTY,0,0,64,RT_Mat,ST_Rsrc,admin,2010-05-10 09:10
4,282648,109737,765,Y,,,2668,,,,64,,64,1,,0,1,0,,0,0,0,350,22400,0,0,22400,,,2010-11-03 08:00,2010-11-11 16:00,2010-11-03 08:00,2010-11-11 16:00,2010-11-03 08:00,2010-11-11 16:00,Y,,,,N,HLoyQfJrskyX6TmVvfXy+g,COST_PER_QTY,0,0,64,RT_Mat,ST_Rsrc,admin,2010-05-10 09:10
5,282649,109731,765,Y,,,2668,,,,64,,64,1,,0,1,0,,0,0,0,350,22400,0,0,22400,,,2010-07-25 08:00,2010-08-02 16:00,2010-07-25 08:00,2010-08-02 16:00,2010-07-25 08:00,2010-08-02 16:00,Y,,,,N,Q1ika6hchUWCG2iSm5PM6Q,COST_PER_QTY,0,0,64,RT_Mat,ST_Rsrc,admin,2010-05-10 09:10
6,282650,109740,765,Y,,,2668,,,,32,,32,1,,0,1,0,,0,0,0,350,11200,0,0,11200,,,2011-01-10 08:00,2011-01-13 16:00,2011-01-10 08:00,2011-01-13 16:00,2011-01-15 08:00,2011-01-18 16:00,Y,,,,N,RoUGW3voKE2KLvIM2SY4+A,COST_PER_QTY,0,0,64,RT_Mat,ST_Rsrc,admin,2010-05-10 09:10
7,282651,109730,765,Y,,,2668,,,,168,,168,1,,0,1,0,,0,0,0,350,58800,0,0,58800,,,2010-06-30 08:00,2010-07-24 16:00,2010-06-30 08:00,2010-07-24 16:00,2010-06-30 08:00,2010-07-24 16:00,Y,,,,N,mSgIdR2yF02E4Nnbh3Vg5A,COST_PER_QTY,0,0,64,RT_Mat,ST_Rsrc,admin,2010-05-10 09:10
8,282652,109732,765,Y,,,2668,,,,168,,168,1,,0,1,0,,0,0,0,350,58800,0,0,58800,,,2010-08-03 08:00,2010-08-26 16:00,2010-08-03 08:00,2010-08-26 16:00,2010-08-03 08:00,2010-08-26 16:00,Y,,,,N,HSftamiHK0mzcn1ZoIXwig,COST_PER_QTY,0,0,64,RT_Mat,ST_Rsrc,admin,2010-05-10 09:10
9,282653,109736,765,Y,,,2668,,,,168,,168,1,,0,1,0,,0,0,0,350,58800,0,0,58800,,,2010-10-10 08:00,2010-11-02 16:00,2010-10-10 08:00,2010-11-02 16:00,2010-10-10 08:00,2010-11-02 16:00,Y,,,,N,zQ1PJME8vEC6MukgxhZ77A,COST_PER_QTY,0,0,64,RT_Mat,ST_Rsrc,admin,2010-05-10 09:10
10,282654,109734,765,Y,,,2668,,,,168,,168,1,,0,1,0,,0,0,0,350,58800,0,0,58800,,,2010-09-06 08:00,2010-09-29 16:00,2010-09-06 08:00,2010-09-29 16:00,2010-09-06 08:00,2010-09-29 16:00,Y,,,,N,TVhzfm2mekyVf1WwKPw23Q,COST_PER_QTY,0,0,64,RT_Mat,ST_Rsrc,admin,2010-05-10 09:10
11,282655,109755,765,Y,,,2668,,,,168,,168,1,,0,1,0,,0,0,0,350,58800,0,0,58800,,,2010-12-16 08:00,2011-01-09 16:00,2010-12-16 08:00,2011-01-09 16:00,2010-12-16 08:00,2011-01-09 16:00,Y,,,,N,5qZ3MU6+iEaycY7s4/8zYg,COST_PER_QTY,0,0,64,RT_Mat,ST_Rsrc,admin,2010-05-10 09:10
12,282656,109738,765,Y,,,2668,,,,168,,168,1,,0,1,0,,0,0,0,350,58800,0,0,58800,,,2010-11-13 08:00,2010-12-06 16:00,2010-11-13 08:00,2010-12-06 16:00,2010-11-13 08:00,2010-12-06 16:00,Y,,,,N,GRQFgY8iB0eH9YRw18Q8ug,COST_PER_QTY,0,0,64,RT_Mat,ST_Rsrc,admin,2010-05-10 09:10
13,282657,109741,765,Y,,,2668,,,,32,,32,1,,0,1,0,,0,0,0,350,11200,0,0,11200,,,2011-01-15 08:00,2011-01-18 16:00,2011-01-15 08:00,2011-01-18 16:00,2011-01-19 08:00,2011-01-23 16:00,Y,,,,N,Tc4gBmiph0qmixghyryLyQ,COST_PER_QTY,0,0,64,RT_Mat,ST_Rsrc,admin,2010-05-10 09:10
14,282658,109728,765,Y,,,2669,,,,87,,87,2.71875,,0,2.71875,0,,0,0,,300,26100,0,0,26100,,,2010-03-11 08:00,2010-03-15 16:00,2010-03-11 08:00,2010-03-15 16:00,2010-03-11 08:00,2010-03-15 16:00,Y,,,,N,49kbFD2WJEiWI0zT903ggA,COST_PER_QTY,0,0,64,RT_Mat,ST_Rsrc,admin,2010-05-10 09:10
15,282659,109718,765,Y,,,2669,,,,190,,190,3.39285714,,0,3.39285714,0,,0,0,,300,57000,0,0,57000,,,2010-03-02 08:00,2010-03-09 16:00,2010-03-02 08:00,2010-03-09 16:00,2010-03-02 08:00,2010-03-09 16:00,Y,,,,N,nNSKZARzrEmhzxHkpqugOQ,COST_PER_QTY,0,0,64,RT_Mat,ST_Rsrc,admin,2010-05-10 09:10
16,282660,109720,765,Y,,,2669,,,,16,,16,1,,0,1,0,,0,0,,300,4800,0,0,4800,,,2010-06-19 08:00,2010-06-20 16:00,2010-06-19 08:00,2010-06-20 16:00,2010-06-19 08:00,2010-06-20 16:00,Y,,,,N,2sbFdJonBkmg9h5WZzyHtQ,COST_PER_QTY,0,0,64,RT_Mat,ST_Rsrc,admin,2010-05-10 09:10
17,282661,109723,765,Y,,,2668,,,,104,,104,1,,0,1,0,,0,0,0,350,36400,0,0,36400,,,2010-05-19 08:00,2010-06-02 16:00,2010-05-19 08:00,2010-06-02 16:00,2010-05-19 08:00,2010-06-02 16:00,Y,,,,N,D8aD2AS1QUq/w2rDUocuCg,COST_PER_QTY,0,0,64,RT_Mat,ST_Rsrc,admin,2010-05-10 09:10
18,282662,109719,765,Y,,,2668,,,,88,,88,1,,0,1,0,,0,0,0,350,30800,0,0,30800,,,2010-03-16 08:00,2010-03-28 16:00,2010-03-16 08:00,2010-03-28 16:00,2010-03-16 08:00,2010-03-28 16:00,Y,,,,N,7YLMcGKT4EGGm8Z16OlRGQ,COST_PER_QTY,0,0,64,RT_Mat,ST_Rsrc,admin,2010-05-10 09:10
19,282663,109717,765,Y,,,2669,,,,16,,16,1,,0,1,0,,0,0,,300,4800,0,0,4800,,,2010-02-28 08:00,2010-03-01 16:00,2010-02-28 08:00,2010-03-01 16:00,2010-02-28 08:00,2010-03-01 16:00,Y,,,,N,0vWmqpaiIkezqa0IbfxPFw,COST_PER_QTY,0,0,64,RT_Mat,ST_Rsrc,admin,2010-05-10 09:10
20,282664,109831,765,Y,,,2668,,,,16,,16,0.25,,0,0.25,0,,0,0,0,350,5600,0,0,5600,,,2010-06-21 08:00,2010-06-29 16:00,2010-06-21 08:00,2010-06-29 16:00,2010-06-21 08:00,2010-06-29 16:00,Y,,,,N,9+441Dbpmkir7RA6zA3prg,COST_PER_QTY,0,0,64,RT_Mat,ST_Rsrc,admin,2010-05-10 09:10
21,282665,109837,765,Y,,,2668,,,,64,,64,1,,0,1,0,,0,0,0,350,22400,0,0,22400,,,2010-09-30 08:00,2010-10-09 16:00,2010-09-30 08:00,2010-10-09 16:00,2010-09-30 08:00,2010-10-09 16:00,Y,,,,N,9dx38OkjNUiqeldaQSk84A,COST_PER_QTY,0,0,64,RT_Mat,ST_Rsrc,admin,2010-05-10 09:10
22,282666,109841,765,Y,,,2668,,,,64,,64,1,,0,1,0,,0,0,0,350,22400,0,0,22400,,,2010-12-07 08:00,2010-12-15 16:00,2010-12-07 08:00,2010-12-15 16:00,2010-12-07 08:00,2010-12-15 16:00,Y,,,,N,nGgu63VEkk+X+4ekMftW6A,COST_PER_QTY,0,0,64,RT_Mat,ST_Rsrc,admin,2010-05-10 09:10
23,282667,109835,765,Y,,,2668,,,,64,,64,1,,0,1,0,,0,0,0,350,22400,0,0,22400,,,2010-08-28 08:00,2010-09-05 16:00,2010-08-28 08:00,2010-09-05 16:00,2010-08-28 08:00,2010-09-05 16:00,Y,,,,N,w7Wnh03d0kusFkNCEFSiEQ,COST_PER_QTY,0,0,64,RT_Mat,ST_Rsrc,admin,2010-05-10 09:10
24,282668,109839,765,Y,,,2668,,,,64,,64,1,,0,1,0,,0,0,0,350,22400,0,0,22400,,,2010-11-03 08:00,2010-11-11 16:00,2010-11-03 08:00,2010-11-11 16:00,2010-11-03 08:00,2010-11-11 16:00,Y,,,,N,SIsIgz05vk29ASW3DsT0Tw,COST_PER_QTY,0,0,64,RT_Mat,ST_Rsrc,admin,2010-05-10 09:10
25,282669,109833,765,Y,,,2668,,,,64,,64,1,,0,1,0,,0,0,0,350,22400,0,0,22400,,,2010-07-25 08:00,2010-08-02 16:00,2010-07-25 08:00,2010-08-02 16:00,2010-07-25 08:00,2010-08-02 16:00,Y,,,,N,VcvaGP3wQka5K3CAErjVaQ,COST_PER_QTY,0,0,64,RT_Mat,ST_Rsrc,admin,2010-05-10 09:10
26,282670,109842,765,Y,,,2668,,,,32,,32,1,,0,1,0,,0,0,0,350,11200,0,0,11200,,,2011-01-10 08:00,2011-01-13 16:00,2011-01-10 08:00,2011-01-13 16:00,2011-01-15 08:00,2011-01-18 16:00,Y,,,,N,AtUpv156xUWI8VmNzDCfuA,COST_PER_QTY,0,0,64,RT_Mat,ST_Rsrc,admin,2010-05-10 09:10
27,282671,109832,765,Y,,,2668,,,,168,,168,1,,0,1,0,,0,0,0,350,58800,0,0,58800,,,2010-06-30 08:00,2010-07-24 16:00,2010-06-30 08:00,2010-07-24 16:00,2010-06-30 08:00,2010-07-24 16:00,Y,,,,N,PIbbVoCt9kKphWqVxdK8Wg,COST_PER_QTY,0,0,64,RT_Mat,ST_Rsrc,admin,2010-05-10 09:10
28,282672,109834,765,Y,,,2668,,,,168,,168,1,,0,1,0,,0,0,0,350,58800,0,0,58800,,,2010-08-03 08:00,2010-08-26 16:00,2010-08-03 08:00,2010-08-26 16:00,2010-08-03 08:00,2010-08-26 16:00,Y,,,,N,Ezdrif7X0ESR7kW7Tbar1Q,COST_PER_QTY,0,0,64,RT_Mat,ST_Rsrc,admin,2010-05-10 09:10
29,282673,109838,765,Y,,,2668,,,,168,,168,1,,0,1,0,,0,0,0,350,58800,0,0,58800,,,2010-10-10 08:00,2010-11-02 16:00,2010-10-10 08:00,2010-11-02 16:00,2010-10-10 08:00,2010-11-02 16:00,Y,,,,N,LbL2374dbUS3HkL0Pv9Bgg,COST_PER_QTY,0,0,64,RT_Mat,ST_Rsrc,admin,2010-05-10 09:10
30,282674,109836,765,Y,,,2668,,,,168,,168,1,,0,1,0,,0,0,0,350,58800,0,0,58800,,,2010-09-06 08:00,2010-09-29 16:00,2010-09-06 08:00,2010-09-29 16:00,2010-09-06 08:00,2010-09-29 16:00,Y,,,,N,iPi3sMTdi0u3ofUEp1Eh2A,COST_PER_QTY,0,0,64,RT_Mat,ST_Rsrc,admin,2010-05-10 09:10
31,282675,109857,765,Y,,,2668,,,,168,,168,1,,0,1,0,,0,0,0,350,58800,0,0,58800,,,2010-12-16 08:00,2011-01-09 16:00,2010-12-16 08:00,2011-01-09 16:00,2010-12-16 08:00,2011-01-09 16:00,Y,,,,N,NeRnje3D8UiBP4eA/uT8gg,COST_PER_QTY,0,0,64,RT_Mat,ST_Rsrc,admin,2010-05-10 09:10
32,282676,109840,765,Y,,,2668,,,,168,,168,1,,0,1,0,,0,0,0,350,58800,0,0,58800,,,2010-11-13 08:00,2010-12-06 16:00,2010-11-13 08:00,2010-12-06 16:00,2010-11-13 08:00,2010-12-06 16:00,Y,,,,N,Vzg9WsqdWE6lGcRSw5AhFg,COST_PER_QTY,0,0,64,RT_Mat,ST_Rsrc,admin,2010-05-10 09:10
33,282677,109843,765,Y,,,2668,,,,32,,32,1,,0,1,0,,0,0,0,350,11200,0,0,11200,,,2011-01-15 08:00,2011-01-18 16:00,2011-01-15 08:00,2011-01-18 16:00,2011-01-19 08:00,2011-01-23 16:00,Y,,,,N,lF8yXk2rEUCjcF/FICRopQ,COST_PER_QTY,0,0,64,RT_Mat,ST_Rsrc,admin,2010-05-10 09:10
34,282678,109830,765,Y,,,2669,,,,87,,87,2.71875,,0,2.71875,0,,0,0,,300,26100,0,0,26100,,,2010-03-11 08:00,2010-03-15 16:00,2010-03-11 08:00,2010-03-15 16:00,2010-03-11 08:00,2010-03-15 16:00,Y,,,,N,N3aMp/ys6UebjDNRXsXulw,COST_PER_QTY,0,0,64,RT_Mat,ST_Rsrc,admin,2010-05-10 09:10
35,282679,109820,765,Y,,,2669,,,,190,,190,3.39285714,,0,3.39285714,0,,0,0,,300,57000,0,0,57000,,,2010-03-02 08:00,2010-03-09 16:00,2010-03-02 08:00,2010-03-09 16:00,2010-03-02 08:00,2010-03-09 16:00,Y,,,,N,0+bCZmFYI0u7fyShMhA6uQ,COST_PER_QTY,0,0,64,RT_Mat,ST_Rsrc,admin,2010-05-10 09:10
36,282680,109822,765,Y,,,2669,,,,16,,16,1,,0,1,0,,0,0,,300,4800,0,0,4800,,,2010-06-19 08:00,2010-06-20 16:00,2010-06-19 08:00,2010-06-20 16:00,2010-06-19 08:00,2010-06-20 16:00,Y,,,,N,p9j4vcT+mEe8pvS31Pw8XA,COST_PER_QTY,0,0,64,RT_Mat,ST_Rsrc,admin,2010-05-10 09:10
37,282681,109825,765,Y,,,2668,,,,104,,104,1,,0,1,0,,0,0,0,350,36400,0,0,36400,,,2010-05-19 08:00,2010-06-02 16:00,2010-05-19 08:00,2010-06-02 16:00,2010-05-19 08:00,2010-06-02 16:00,Y,,,,N,sWpzOZ9kck+Z0Ymo2BdI/Q,COST_PER_QTY,0,0,64,RT_Mat,ST_Rsrc,admin,2010-05-10 09:10
38,282682,109821,765,Y,,,2668,,,,88,,88,1,,0,1,0,,0,0,0,350,30800,0,0,30800,,,2010-03-16 08:00,2010-03-28 16:00,2010-03-16 08:00,2010-03-28 16:00,2010-03-16 08:00,2010-03-28 16:00,Y,,,,N,898eXUgQKkKJi+Su8qGWPw,COST_PER_QTY,0,0,64,RT_Mat,ST_Rsrc,admin,2010-05-10 09:10
39,282683,109819,765,Y,,,2669,,,,16,,16,1,,0,1,0,,0,0,,300,4800,0,0,4800,,,2010-02-28 08:00,2010-03-01 16:00,2010-02-28 08:00,2010-03-01 16:00,2010-02-28 08:00,2010-03-01 16:00,Y,,,,N,ytq6LyuC3Uuver/rmSaL3g,COST_PER_QTY,0,0,64,RT_Mat,ST_Rsrc,admin,2010-05-10 09:10
40,282684,109933,765,Y,,,2668,,,,16,,16,0.25,,0,0.25,0,,0,0,0,350,5600,0,0,5600,,,2010-06-21 08:00,2010-06-29 16:00,2010-06-21 08:00,2010-06-29 16:00,2010-06-21 08:00,2010-06-29 16:00,Y,,,,N,0OnlsXO72UOKPeYfAh38IA,COST_PER_QTY,0,0,64,RT_Mat,ST_Rsrc,admin,2010-05-10 09:10
41,282685,109939,765,Y,,,2668,,,,64,,64,1,,0,1,0,,0,0,0,350,22400,0,0,22400,,,2010-09-30 08:00,2010-10-09 16:00,2010-09-30 08:00,2010-10-09 16:00,2010-09-30 08:00,2010-10-09 16:00,Y,,,,N,bbat3yHzb0+Px+0thzKoOw,COST_PER_QTY,0,0,64,RT_Mat,ST_Rsrc,admin,2010-05-10 09:10
42,282686,109943,765,Y,,,2668,,,,64,,64,1,,0,1,0,,0,0,0,350,22400,0,0,22400,,,2010-12-07 08:00,2010-12-15 16:00,2010-12-07 08:00,2010-12-15 16:00,2010-12-07 08:00,2010-12-15 16:00,Y,,,,N,9gN3xya5JEyv+UZGCQ10fA,COST_PER_QTY,0,0,64,RT_Mat,ST_Rsrc,admin,2010-05-10 09:10
43,282687,109937,765,Y,,,2668,,,,64,,64,1,,0,1,0,,0,0,0,350,22400,0,0,22400,,,2010-08-28 08:00,2010-09-05 16:00,2010-08-28 08:00,2010-09-05 16:00,2010-08-28 08:00,2010-09-05 16:00,Y,,,,N,D94oKnzntU60Fsmmm69pNA,COST_PER_QTY,0,0,64,RT_Mat,ST_Rsrc,admin,2010-05-10 09:10
44,282688,109941,765,Y,,,2668,,,,64,,64,1,,0,1,0,,0,0,0,350,22400,0,0,22400,,,2010-11-03 08:00,2010-11-11 16:00,2010-11-03 08:00,2010-11-11 16:00,2010-11-03 08:00,2010-11-11 16:00,Y,,,,N,fgm5rLc240OYYJ+Wn4h7Gw,COST_PER_QTY,0,0,64,RT_Mat,ST_Rsrc,admin,2010-05-10 09:10
45,282689,109935,765,Y,,,2668,,,,64,,64,1,,0,1,0,,0,0,0,350,22400,0,0,22400,,,2010-07-25 08:00,2010-08-02 16:00,2010-07-25 08:00,2010-08-02 16:00,2010-07-25 08:00,2010-08-02 16:00,Y,,,,N,3zMfZlbFHU6kFMFK5BGf+w,COST_PER_QTY,0,0,64,RT_Mat,ST_Rsrc,admin,2010-05-10 09:10
46,282690,109944,765,Y,,,2668,,,,32,,32,1,,0,1,0,,0,0,0,350,11200,0,0,11200,,,2011-01-10 08:00,2011-01-13 16:00,2011-01-10 08:00,2011-01-13 16:00,2011-01-15 08:00,2011-01-18 16:00,Y,,,,N,WDnwCbp2WkWVLswifzcqyw,COST_PER_QTY,0,0,64,RT_Mat,ST_Rsrc,admin,2010-05-10 09:10
47,282691,109934,765,Y,,,2668,,,,168,,168,1,,0,1,0,,0,0,0,350,58800,0,0,58800,,,2010-06-30 08:00,2010-07-24 16:00,2010-06-30 08:00,2010-07-24 16:00,2010-06-30 08:00,2010-07-24 16:00,Y,,,,N,x+8vCxMheEq0gvPL8G63iA,COST_PER_QTY,0,0,64,RT_Mat,ST_Rsrc,admin,2010-05-10 09:10
48,282692,109936,765,Y,,,2668,,,,168,,168,1,,0,1,0,,0,0,0,350,58800,0,0,58800,,,2010-08-03 08:00,2010-08-26 16:00,2010-08-03 08:00,2010-08-26 16:00,2010-08-03 08:00,2010-08-26 16:00,Y,,,,N,Px9VzTyhLkySQ8sBnp2Hag,COST_PER_QTY,0,0,64,RT_Mat,ST_Rsrc,admin,2010-05-10 09:10
49,282693,109940,765,Y,,,2668,,,,168,,168,1,,0,1,0,,0,0,0,350,58800,0,0,58800,,,2010-10-10 08:00,2010-11-02 16:00,2010-10-10 08:00,2010-11-02 16:00,2010-10-10 08:00,2010-11-02 16:00,Y,,,,N,8J3BO+46Mki44QwhhOARRw,COST_PER_QTY,0,0,64,RT_Mat,ST_Rsrc,admin,2010-05-10 09:10
50,282694,109938,765,Y,,,2668,,,,168,,168,1,,0,1,0,,0,0,0,350,58800,0,0,58800,,,2010-09-06 08:00,2010-09-29 16:00,2010-09-06 08:00,2010-09-29 16:00,2010-09-06 08:00,2010-09-29 16:00,Y,,,,N,GCPn5HkrzUy2AEy4lKeBuA,COST_PER_QTY,0,0,64,RT_Mat,ST_Rsrc,admin,2010-05-10 09:10
51,282695,109959,765,Y,,,2668,,,,168,,168,1,,0,1,0,,0,0,0,350,58800,0,0,58800,,,2010-12-16 08:00,2011-01-09 16:00,2010-12-16 08:00,2011-01-09 16:00,2010-12-16 08:00,2011-01-09 16:00,Y,,,,N,swA5sq8PX0OOFQmKFbxjhQ,COST_PER_QTY,0,0,64,RT_Mat,ST_Rsrc,admin,2010-05-10 09:10
52,282696,109942,765,Y,,,2668,,,,168,,168,1,,0,1,0,,0,0,0,350,58800,0,0,58800,,,2010-11-13 08:00,2010-12-06 16:00,2010-11-13 08:00,2010-12-06 16:00,2010-11-13 08:00,2010-12-06 16:00,Y,,,,N,SzCkuF6IZEq9otW1YBargQ,COST_PER_QTY,0,0,64,RT_Mat,ST_Rsrc,admin,2010-05-10 09:10
53,282697,109945,765,Y,,,2668,,,,32,,32,1,,0,1,0,,0,0,0,350,11200,0,0,11200,,,2011-01-15 08:00,2011-01-18 16:00,2011-01-15 08:00,2011-01-18 16:00,2011-01-19 08:00,2011-01-23 16:00,Y,,,,N,4V7tbcof+EGEV9Ql9fAc4w,COST_PER_QTY,0,0,64,RT_Mat,ST_Rsrc,admin,2010-05-10 09:10
54,282698,109932,765,Y,,,2669,,,,87,,87,2.71875,,0,2.71875,0,,0,0,,300,26100,0,0,26100,,,2010-03-11 08:00,2010-03-15 16:00,2010-03-11 08:00,2010-03-15 16:00,2010-03-11 08:00,2010-03-15 16:00,Y,,,,N,oBugYzMih0OCmgkWIoUpEA,COST_PER_QTY,0,0,64,RT_Mat,ST_Rsrc,admin,2010-05-10 09:10
55,282699,109922,765,Y,,,2669,,,,190,,190,3.39285714,,0,3.39285714,0,,0,0,,300,57000,0,0,57000,,,2010-03-02 08:00,2010-03-09 16:00,2010-03-02 08:00,2010-03-09 16:00,2010-03-02 08:00,2010-03-09 16:00,Y,,,,N,7+iGjBwm9UGKU2tIRAcX2w,COST_PER_QTY,0,0,64,RT_Mat,ST_Rsrc,admin,2010-05-10 09:10
56,282700,109924,765,Y,,,2669,,,,16,,16,1,,0,1,0,,0,0,,300,4800,0,0,4800,,,2010-06-19 08:00,2010-06-20 16:00,2010-06-19 08:00,2010-06-20 16:00,2010-06-19 08:00,2010-06-20 16:00,Y,,,,N,AG3vW7pK50+O2qN9DAkgRA,COST_PER_QTY,0,0,64,RT_Mat,ST_Rsrc,admin,2010-05-10 09:10
57,282701,109927,765,Y,,,2668,,,,104,,104,1,,0,1,0,,0,0,0,350,36400,0,0,36400,,,2010-05-19 08:00,2010-06-02 16:00,2010-05-19 08:00,2010-06-02 16:00,2010-05-19 08:00,2010-06-02 16:00,Y,,,,N,fCoamM0yT0SfshCckQ25Qw,COST_PER_QTY,0,0,64,RT_Mat,ST_Rsrc,admin,2010-05-10 09:10
58,282702,109923,765,Y,,,2668,,,,88,,88,1,,0,1,0,,0,0,0,350,30800,0,0,30800,,,2010-03-16 08:00,2010-03-28 16:00,2010-03-16 08:00,2010-03-28 16:00,2010-03-16 08:00,2010-03-28 16:00,Y,,,,N,0YOx/kqiS0eStwFJxCQt9Q,COST_PER_QTY,0,0,64,RT_Mat,ST_Rsrc,admin,2010-05-10 09:10
59,282703,109921,765,Y,,,2669,,,,16,,16,1,,0,1,0,,0,0,,300,4800,0,0,4800,,,2010-02-28 08:00,2010-03-01 16:00,2010-02-28 08:00,2010-03-01 16:00,2010-02-28 08:00,2010-03-01 16:00,Y,,,,N,NnQV+W1yZUONGab45gZ/Mg,COST_PER_QTY,0,0,64,RT_Mat,ST_Rsrc,admin,2010-05-10 09:10
60,282704,110035,765,Y,,,2668,,,,16,,16,0.25,,0,0.25,0,,0,0,0,350,5600,0,0,5600,,,2010-06-21 08:00,2010-06-29 16:00,2010-06-21 08:00,2010-06-29 16:00,2010-06-21 08:00,2010-06-29 16:00,Y,,,,N,7YY7mFDheUGEkkHMV6gDOg,COST_PER_QTY,0,0,64,RT_Mat,ST_Rsrc,admin,2010-05-10 09:10
61,282705,110041,765,Y,,,2668,,,,64,,64,1,,0,1,0,,0,0,0,350,22400,0,0,22400,,,2010-09-30 08:00,2010-10-09 16:00,2010-09-30 08:00,2010-10-09 16:00,2010-09-30 08:00,2010-10-09 16:00,Y,,,,N,ui+i1zHqHkC4rDuljFHpDw,COST_PER_QTY,0,0,64,RT_Mat,ST_Rsrc,admin,2010-05-10 09:10
62,282706,110045,765,Y,,,2668,,,,64,,64,1,,0,1,0,,0,0,0,350,22400,0,0,22400,,,2010-12-07 08:00,2010-12-15 16:00,2010-12-07 08:00,2010-12-15 16:00,2010-12-07 08:00,2010-12-15 16:00,Y,,,,N,hNlV/RKvvU2yFwiaxt6Fyg,COST_PER_QTY,0,0,64,RT_Mat,ST_Rsrc,admin,2010-05-10 09:10
63,282707,110039,765,Y,,,2668,,,,64,,64,1,,0,1,0,,0,0,0,350,22400,0,0,22400,,,2010-08-28 08:00,2010-09-05 16:00,2010-08-28 08:00,2010-09-05 16:00,2010-08-28 08:00,2010-09-05 16:00,Y,,,,N,NA8PT+KoYEuf83wOcKOoIQ,COST_PER_QTY,0,0,64,RT_Mat,ST_Rsrc,admin,2010-05-10 09:10
64,282708,110043,765,Y,,,2668,,,,64,,64,1,,0,1,0,,0,0,0,350,22400,0,0,22400,,,2010-11-03 08:00,2010-11-11 16:00,2010-11-03 08:00,2010-11-11 16:00,2010-11-03 08:00,2010-11-11 16:00,Y,,,,N,y43O0zxU90ufAMuRBsCDYA,COST_PER_QTY,0,0,64,RT_Mat,ST_Rsrc,admin,2010-05-10 09:10
65,282709,110037,765,Y,,,2668,,,,64,,64,1,,0,1,0,,0,0,0,350,22400,0,0,22400,,,2010-07-25 08:00,2010-08-02 16:00,2010-07-25 08:00,2010-08-02 16:00,2010-07-25 08:00,2010-08-02 16:00,Y,,,,N,RSi8gy2znUCQNFUFbh0CUA,COST_PER_QTY,0,0,64,RT_Mat,ST_Rsrc,admin,2010-05-10 09:10
